# 顺丰软件开发计划

Schedule from MS Project, 2014-03-13 to 2014-12-11, A marks actual dates.
sf

## Calendars

- 标准: Mon-Fri 08:00-12:00, 13:00-17:00; Sat-Sun off. Exceptions (off unless hours are given): 2014-05-04 08:00-12:00, 13:00-17:00.

## Resources

| Resource |
| --- |
| 用户 |
| 田建军/张艺 |
| 张波/连泽毅 |
| 欧阳灿/李媛媛 |
| EXP研发人员 |
| BIL研发工程师 |
| EXP研发工程师 |
| Asura研发工程师 |
| 张波/连泽毅/欧阳灿/李媛媛 |
| 潘琴 |
| 潘琴/张波/连泽毅 |
| 用户/欧阳灿/李媛媛 |
| 项目组成员 |
| 李永平 |
| 欧阳灿/王苗 |
| 黄广强/张波/连泽毅 |
| 用户/欧阳灿/王苗 |
| 田建军/张艺/党陈鹏/建晓辉 |
| 黄广强 |
| 张波/连泽毅/欧阳灿/王苗 |
| Asura测试人员 |
| 田建军 |
| BAR研发工程师 |
| CMS研发工程师 |
| 田建军/张艺/建晓辉 |
| 熊骊 |
| 周游 |
| 建晓辉 |
| CMS |
| 研发工程师 |
| QUERY研发工程师 |
| 李顺/连泽毅 |
| 黄广强/李顺/连泽毅 |
| 李顺/连泽毅/欧阳灿/王苗 |
| 唐勇 |
| 尹越 |

## Schedule

| ID | WBS | Task | Type | Duration | Start | Finish | Predecessors | Complete | Remaining | Actual start | Total slack | Free slack | Constraint | Resources | Work | Actual work |
| --- | --- | --- | --- | --- | --- | --- | --- | --- | --- | --- | --- | --- | --- | --- | --- | --- |
| 1 | 2 | **SPMS-CORE V1.0版本项目计划** |  | 106d | 2014-07-17 08:00 | 2014-12-11 17:00 |  | 10% | 95.59d | 2014-03-13 08:00 |  |  |  |  | 347.63h | 32h |
| 2 | 2.1 | **需求阶段** |  | 24d | 2014-07-26 08:00 | 2014-08-27 17:00 |  | 80% | 4.8d | 2014-03-13 08:00 |  |  |  |  | 40h | 32h |
| 3 | 2.1.1 | 需求调研 |  | 32h | 2014-03-13 08:00 A | 2014-03-18 17:00 A |  | 100% |  |  |  |  | finish no earlier than 2014-03-18 17:00 | 熊骊; 周游; 尹越; 唐勇 | 32h | 32h |
| 4 | 2.1.2 | **需求分析** |  | 1d | 2014-08-27 08:00 | 2014-08-27 17:00 |  |  |  |  | 0d |  |  |  | 8h |  |
| 5 | 1.1.2.1 | 编写《需求规格说明书》 |  | 8h | 2014-08-27 08:00 | 2014-08-27 17:00 |  |  |  |  | 0d |  | start no earlier than 2014-08-27 08:00 | 熊骊; 周游; 唐勇; 尹越 | 8h |  |
| 6 | 1.2 | **计划阶段** |  | 8h | 2014-08-26 08:00 | 2014-08-26 17:00 |  |  |  |  |  |  |  |  | 36.5h |  |
| 7 | 1.2.1 | 编写《研发计划》 |  | 2h | 2014-08-28 08:00 | 2014-08-28 10:00 | 5 |  |  |  | 75.75d |  | start no earlier than 2014-08-26 08:00 | 熊骊; 周游; 唐勇; 尹越 | 8h |  |
| 8 | 1.2.2 | 编写《搭建计划》 |  | 2h | 2014-08-28 08:00 | 2014-08-28 10:00 | 5 |  |  |  | 75.75d |  | start no earlier than 2014-08-26 08:00 | 李顺/连泽毅 [400%] | 8h |  |
| 9 | 1.2.3 | 编写《测试计划》 |  | 1h | 2014-08-28 08:00 | 2014-08-28 09:00 | 5 |  |  |  | 75.88d |  | start no earlier than 2014-08-26 08:00 | 欧阳灿/王苗 [400%] | 8h |  |
| 10 | 1.2.4 | 合并《项目计划》 |  | 1h | 2014-08-28 08:00 | 2014-08-28 09:00 | 5 |  |  |  | 74.75d | 0d | start no earlier than 2014-08-26 08:00 | 熊骊; 周游; 尹越; 唐勇 | 4h |  |
| 11 | 1.2.5 | 《项目计划》评审 | manual | 1h | 2014-08-28 09:00 | 2014-08-28 10:00 | 10 |  |  |  |  |  | start no earlier than 2014-08-26 08:00 | 项目组成员 [50%] | 0.5h |  |
| 12 | 1.2.6 | 《项目计划》修改 |  | 1h | 2014-08-28 10:00 | 2014-08-28 11:00 | 11 |  |  |  | 74.75d | 1.5d | start no earlier than 2014-08-26 08:00 | 熊骊; 周游; 尹越; 唐勇 | 8h |  |
| 13 | 1.3 | **前期交付物提交入基线** |  | 0.12d | 2014-08-31 08:00 | 2014-08-31 09:00 |  |  |  |  |  |  |  |  | 8h |  |
| 14 | 1.3.1 | 《需求规格说明书》、《项目计划》 |  | 1h | 2014-08-29 16:00 | 2014-08-31 09:00 | 12 |  |  |  | 73.25d | 0d | finish no earlier than 2014-08-31 09:00 | 熊骊 | 8h |  |
| 15 | 2.2 | **系统设计阶段** |  | 0.25d | 2014-08-29 16:00 | 2014-08-31 09:00 |  |  |  |  |  |  |  |  | 8h |  |
| 16 | 1.4.1 | **概要设计** |  | 0.25d | 2014-08-29 16:00 | 2014-08-31 09:00 |  |  |  |  |  |  |  |  | 2h |  |
| 17 | 1.4.1.1 | 《概要设计说明书》 | manual | 2h | 2014-09-01 08:00 | 2014-09-01 10:00 | 14 |  |  |  |  |  | start no earlier than 2014-08-29 16:00 | Asura研发工程师 | 2h |  |
| 18 | 1.4.2 | **数据库设计** |  | 0.25d | 2014-08-29 16:00 | 2014-08-31 09:00 |  |  |  |  |  |  |  |  | 4h |  |
| 19 | 1.4.2.1 | 《数据库设计说明书》 |  | 1h | 2014-09-01 08:00 | 2014-09-01 09:00 | 14 |  |  |  | 73.88d |  | finish no earlier than 2014-08-31 09:00 | 熊骊; 周游; 尹越; 唐勇 | 4h |  |
| 20 | 1.4.3 | **接口设计** |  | 0.25d | 2014-08-29 16:00 | 2014-08-31 09:00 |  |  |  |  |  |  |  |  | 2h |  |
| 21 | 1.4.3.1 | 《系统接口设计文档》 |  | 2h | 2014-09-01 08:00 | 2014-09-01 10:00 | 14 |  |  |  | 73.25d | 7.5d | finish no earlier than 2014-04-01 17:00 | Asura研发工程师 | 2h |  |
| 22 | 2.3 | **编码实现阶段** |  | 82h | 2014-08-28 08:00 | 2014-09-11 10:00 |  |  |  |  |  |  |  |  | 96h |  |
| 23 | 1.5.1 | 编码及单元测试 | manual | 80h | 2014-08-28 08:00 | 2014-09-10 17:00 | 5 |  |  |  |  |  | start no earlier than 2014-07-24 08:00 | 研发工程师 | 80h |  |
| 24 | 1.5.2 | 编写《系统升级方案》 |  | 2h | 2014-09-10 15:00 | 2014-09-10 17:00 | 21 |  |  |  | 65.75d | 0d | finish no earlier than 2014-09-10 17:00 | 熊骊 [266.7%]; 周游 [266.7%]; 尹越 [133.3%]; 唐勇 [133.3%] | 16h |  |

Notes:
- 10: 合并《研发计划》、《搭建计划》、《测试计划》
- 17: 如果涉及到多个系统，需要编写《系统解决方案》
- 19: 如果涉及到多个系统，需要编写《系统解决方案》
- 21: 如果涉及到多个系统，需要编写《系统解决方案》

| ID | WBS | Task | Type | Duration | Start | Finish | Predecessors | Total slack | Free slack | Constraint | Resources | Work |
| --- | --- | --- | --- | --- | --- | --- | --- | --- | --- | --- | --- | --- |
| 25 | 2.4 | **系统测试阶段** |  | 2h | 2014-09-10 08:00 | 2014-09-10 10:00 |  |  |  |  |  | 53.93h |
| 26 | 1.6.1 | **测试准备** |  | 2h | 2014-09-10 08:00 | 2014-09-10 10:00 |  |  |  |  |  | 3.33h |
| 27 | 1.6.1.1 | **学习新增或修改的功能** |  | 2h | 2014-09-10 08:00 | 2014-09-10 10:00 |  |  |  |  |  | 3.33h |
| 28 | 1.6.1.1.1 | 编写《新特性列表》 | manual | 2h | 2014-09-11 08:00 | 2014-09-11 10:00 | 24 |  |  | start no earlier than 2014-09-10 08:00 | 熊骊; 周游; 尹越 [66.7%]; 唐勇 [66.7%] | 3.33h |
| 29 | 2.4.2 | **第一轮测试** |  | 16h | 2014-09-10 08:00 | 2014-09-11 17:00 |  |  |  |  |  | 24h |
| 30 | 1.6.2.1 | 测试新增功能 | manual | 16h | 2014-09-10 08:00 | 2014-09-11 17:00 | 23 |  |  | start no earlier than 2014-09-10 08:00 | Asura研发工程师 [200%] | 8h |
| 31 | 1.6.2.2 | 测试基本功能 | manual | 16h | 2014-09-10 08:00 | 2014-09-11 17:00 | 23 |  |  | start no earlier than 2014-09-10 08:00 |  | 8h |
| 32 | 1.6.2.3 | 开发人员修改BUG | manual | 16h | 2014-09-10 08:00 | 2014-09-11 17:00 | 23 |  |  | start no earlier than 2014-09-10 08:00 |  | 8h |
| 33 | 2.4.2 | **第二轮测试** |  | 16h | 2014-09-12 08:00 | 2014-09-15 17:00 |  |  |  |  |  | 25.6h |
| 34 | 1.6.3.1 | 测试新增功能 | manual | 16h | 2014-09-12 08:00 | 2014-09-15 17:00 | 32 |  |  | start no earlier than 2014-09-12 08:00 |  | 8h |
| 35 | 1.6.3.2 | 测试基本功能 | manual | 16h | 2014-09-12 08:00 | 2014-09-15 17:00 | 32 |  |  | start no earlier than 2014-09-12 08:00 |  | 8h |
| 36 | 1.6.3.3 | 开发人员修改BUG | manual | 16h | 2014-09-12 08:00 | 2014-09-15 17:00 | 32 |  |  | start no earlier than 2014-09-12 08:00 |  | 4h |
| 37 | 1.6.3.4 | 编写《系统测试报告》 | manual | 2h | 2014-09-15 08:00 | 2014-09-15 10:00 | 36 |  |  |  | 熊骊; 周游; 尹越 [40%]; 唐勇 [40%] | 5.6h |
| 38 | 1.6.4 | **相关交付物入基线** |  | 1h | 2014-09-15 08:00 | 2014-09-15 09:00 |  |  |  |  |  | 1h |
| 39 | 1.6.4.1 | 代码、发布包、《系统测试报告》、《数据库设计说明书》、《概要设计说明书》、《接口说明文档》、《系统升级方案》、《新特性列表》 | manual | 1h | 2014-09-15 08:00 | 2014-09-15 09:00 | 37 |  |  | start no earlier than 2014-09-15 08:00 | 熊骊 | 1h |
| 40 | 1.7 | **用户测试阶段** |  | 50h | 2014-09-11 08:00 | 2014-09-19 10:00 |  |  |  |  |  | 105.2h |
| 41 | 1.7.1 | **测试准备** |  | 2h | 2014-09-11 08:00 | 2014-09-11 10:00 |  |  |  |  |  | 8h |
| 42 | 1.7.1.1 | 需求、《新特性列表》学习 |  | 2h | 2014-09-11 08:00 | 2014-09-11 10:00 |  | -0.5d | 0d | start no earlier than 2014-09-11 08:00 | Asura测试人员 [400%] | 8h |
| 43 | 1.7.2 | **第一轮用户测试** |  | 18h | 2014-09-11 08:00 | 2014-09-15 10:00 |  |  |  |  |  | 21.2h |
| 44 | 1.7.2.1 | 第一轮测试环境搭建 |  | 2h | 2014-09-11 10:00 | 2014-09-11 12:00 | 42 | -0.5d | 0d | start no earlier than 2014-06-10 08:00 | 黄广强/李顺/连泽毅 | 2h |
| 45 | 1.7.2.2 | 第一轮用户测试 |  | 16h | 2014-09-11 13:00 | 2014-09-15 12:00 | 44 | 63.5d |  | finish no earlier than 2014-06-06 17:00 |  | 16h |
| 46 | 1.7.2.3 | 开发人员修改BUG，提交新版本 | manual | 16h | 2014-09-11 08:00 | 2014-09-12 17:00 | 44 |  |  | start no earlier than 2014-09-11 08:00 | Asura研发工程师 [400%] | 3.2h |
| 47 | 1.7.3 | **第二轮用户测试（中间版本）** |  | 18h | 2014-09-12 08:00 | 2014-09-16 10:00 |  |  |  |  |  | 32h |
| 48 | 1.7.3.1 | 第二轮测试环境搭建 |  | 1h | 2014-09-15 08:00 | 2014-09-15 09:00 | 46 | -0.25d | 0d | finish no earlier than 2014-06-09 17:00 |  | 8h |
| 49 | 1.7.3.2 | 第二轮用户测试 |  | 16h | 2014-09-15 09:00 | 2014-09-17 09:00 | 48 | 61.88d |  | finish no earlier than 2014-06-11 17:00 |  | 8h |
| 50 | 1.7.3.3 | 开发人员修改bug，提交新版本 |  | 16h | 2014-09-15 09:00 | 2014-09-17 09:00 | 48 | -0.25d | 0d | finish no earlier than 2014-06-11 17:00 | Asura研发工程师 | 16h |

Notes:
- 40: 紧急发布版本除外。

| ID | WBS | Task | Duration | Start | Finish | Predecessors | Total slack | Free slack | Constraint | Resources | Work |
| --- | --- | --- | --- | --- | --- | --- | --- | --- | --- | --- | --- |
| 51 | 1.7.4 | **第三轮用户测试（验收版本）** | 9h | 2014-09-17 08:00 | 2014-09-18 09:00 |  |  |  |  |  | 20h |
| 52 | 1.7.4.1 | 第八轮测试环境搭建 | 1h | 2014-09-17 09:00 | 2014-09-17 10:00 | 50 | -0.25d | 0d | start no earlier than 2014-09-17 08:00 |  | 8h |
| 53 | 1.7.4.2 | 第八轮用户测试 | 8h | 2014-09-17 10:00 | 2014-09-18 10:00 | 52 | 60.75d |  | start no earlier than 2014-09-17 08:00 |  | 4h |
| 54 | 1.7.4.3 | 开发人员修改bug，提交新版本 | 8h | 2014-09-17 10:00 | 2014-09-18 10:00 | 52 | -0.25d | 0d | start no earlier than 2014-07-17 08:00 | Asura研发工程师 | 8h |
| 55 | 1.7.5 | **测试总结** | 3h | 2014-09-18 08:00 | 2014-09-18 11:00 |  |  |  |  |  | 24h |
| 56 | 1.7.5.1 | 编写《测试报告》 | 1h | 2014-09-18 10:00 | 2014-09-18 11:00 | 54 | -0.25d | 0d | start no earlier than 2014-09-18 08:00 |  | 8h |
| 57 | 1.7.5.2 | 编写《版本发布意见书》 | 1h | 2014-09-18 11:00 | 2014-09-18 12:00 | 56 | -0.25d | 0d |  |  | 8h |
| 58 | 1.7.5.3 | 《用户测试报告》、《版本发布意见书》文档入基线 | 1h | 2014-09-18 13:00 | 2014-09-18 14:00 | 57 | -0.25d | 0d |  |  | 8h |
